# INST706_Project_Step1

Schedule from MS Project, 2018-05-29 to 2019-03-18, costs in $.
Toshiba

## Calendars

- Standard: Mon-Fri 08:00-12:00, 13:00-17:00; Sat-Sun off. Exceptions (off unless hours are given): 2018-07-04 (Independence Day), 2018-09-03 (Labor Day), 2018-11-22 to 2018-11-23 (Thanksgiving), 2018-12-24 to 2018-12-25 (Christmas), 2018-12-31 to 2019-01-01 (New Year's).

## Resources

| Resource | Rate |
| --- | --- |
| Chris Johnson (Project Manager) | 75 |
| Ryan Neff (Functional Lead) | 75 |
| Stacy Lyle (Functional Analyst) | 75 |
| Rick Burke (Infrastructure Lead) | 75 |
| Marc Sanders (Development Lead) | 75 |
| Developer 1 (TBD) | 165 |
| Sanjay Vohra (DBA) | 75 |
| Kara Siposki (Test Lead) | 75 |
| Todd Eliason (Tester) | 75 |
| Developer 2 (TBD) | 175 |
| Developer 3 (TBD) | 175 |
| Trainer 1 | 75 |
| End User 1 | 75 |
| End User 2 | 75 |
| ERP Expert 1 | 175 |
| ERP Expert 2 | 175 |
| Developer 4 | 175 |
| Developer 5 | 175 |

## Schedule

| ID | WBS | Task | Duration | Start | Finish | Total slack | Constraint | Resources | Work | Cost |
| --- | --- | --- | --- | --- | --- | --- | --- | --- | --- | --- |
| 1 | 1 | **Overall Project** | 202d | 2018-05-29 08:00 | 2019-03-18 17:00 |  |  |  | 9712.62h | 1,048,942.63 |
| 2 | 1.1 | **Project Management** | 181d | 2018-05-30 08:00 | 2019-02-18 17:00 |  |  |  | 852.8h | 64,113.71 |
| 3 | 1.1.1 | **Manage Project** | 162.1d | 2018-06-08 08:00 | 2019-02-01 08:48 | 0d |  | Chris Johnson (Project Manager) [50%] | 676.4h | 50,730 |
| 4 | 1.1.1.1 | **Manage Communication** | 162.1d | 2018-06-08 08:00 | 2019-02-01 08:48 | 0d |  |  | 28h | 2,100 |
| 5 | 1.1.1.1.1 | **Progress Review Team Meeting** | 126.1d | 2018-06-08 08:00 | 2018-12-07 08:48 |  |  |  | 21.6h | 1,620 |
| 6 | 1.1.1.1.1.1 | Progress Review Team Meeting 1 | 0.1d | 2018-06-08 08:00 | 2018-06-08 08:48 | 193.9d | start no earlier than 2018-06-08 08:00 | Chris Johnson (Project Manager) | 0.8h | 60 |
| 7 | 1.1.1.1.1.2 | Progress Review Team Meeting 2 | 0.1d | 2018-06-15 08:00 | 2018-06-15 08:48 | 188.9d | start no earlier than 2018-06-15 08:00 | Chris Johnson (Project Manager) | 0.8h | 60 |
| 8 | 1.1.1.1.1.3 | Progress Review Team Meeting 3 | 0.1d | 2018-06-22 08:00 | 2018-06-22 08:48 | 183.9d | start no earlier than 2018-06-22 08:00 | Chris Johnson (Project Manager) | 0.8h | 60 |
| 9 | 1.1.1.1.1.4 | Progress Review Team Meeting 4 | 0.1d | 2018-06-29 08:00 | 2018-06-29 08:48 | 178.9d | start no earlier than 2018-06-29 08:00 | Chris Johnson (Project Manager) | 0.8h | 60 |
| 10 | 1.1.1.1.1.5 | Progress Review Team Meeting 5 | 0.1d | 2018-07-06 08:00 | 2018-07-06 08:48 | 174.9d | start no earlier than 2018-07-06 08:00 | Chris Johnson (Project Manager) | 0.8h | 60 |
| 11 | 1.1.1.1.1.6 | Progress Review Team Meeting 6 | 0.1d | 2018-07-13 08:00 | 2018-07-13 08:48 | 169.9d | start no earlier than 2018-07-13 08:00 | Chris Johnson (Project Manager) | 0.8h | 60 |
| 12 | 1.1.1.1.1.7 | Progress Review Team Meeting 7 | 0.1d | 2018-07-20 08:00 | 2018-07-20 08:48 | 164.9d | start no earlier than 2018-07-20 08:00 | Chris Johnson (Project Manager) | 0.8h | 60 |
| 13 | 1.1.1.1.1.8 | Progress Review Team Meeting 8 | 0.1d | 2018-07-27 08:00 | 2018-07-27 08:48 | 159.9d | start no earlier than 2018-07-27 08:00 | Chris Johnson (Project Manager) | 0.8h | 60 |
| 14 | 1.1.1.1.1.9 | Progress Review Team Meeting 9 | 0.1d | 2018-08-03 08:00 | 2018-08-03 08:48 | 154.9d | start no earlier than 2018-08-03 08:00 | Chris Johnson (Project Manager) | 0.8h | 60 |
| 15 | 1.1.1.1.1.10 | Progress Review Team Meeting 10 | 0.1d | 2018-08-10 08:00 | 2018-08-10 08:48 | 149.9d | start no earlier than 2018-08-10 08:00 | Chris Johnson (Project Manager) | 0.8h | 60 |
| 16 | 1.1.1.1.1.11 | Progress Review Team Meeting 11 | 0.1d | 2018-08-17 08:00 | 2018-08-17 08:48 | 144.9d | start no earlier than 2018-08-17 08:00 | Chris Johnson (Project Manager) | 0.8h | 60 |
| 17 | 1.1.1.1.1.12 | Progress Review Team Meeting 12 | 0.1d | 2018-08-24 08:00 | 2018-08-24 08:48 | 139.9d | start no earlier than 2018-08-24 08:00 | Chris Johnson (Project Manager) | 0.8h | 60 |
| 18 | 1.1.1.1.1.13 | Progress Review Team Meeting 13 | 0.1d | 2018-08-31 08:00 | 2018-08-31 08:48 | 134.9d | start no earlier than 2018-08-31 08:00 | Chris Johnson (Project Manager) | 0.8h | 60 |
| 19 | 1.1.1.1.1.14 | Progress Review Team Meeting 14 | 0.1d | 2018-09-07 08:00 | 2018-09-07 08:48 | 130.9d | start no earlier than 2018-09-07 08:00 | Chris Johnson (Project Manager) | 0.8h | 60 |
| 20 | 1.1.1.1.1.15 | Progress Review Team Meeting 15 | 0.1d | 2018-09-14 08:00 | 2018-09-14 08:48 | 125.9d | start no earlier than 2018-09-14 08:00 | Chris Johnson (Project Manager) | 0.8h | 60 |
| 21 | 1.1.1.1.1.16 | Progress Review Team Meeting 16 | 0.1d | 2018-09-21 08:00 | 2018-09-21 08:48 | 120.9d | start no earlier than 2018-09-21 08:00 | Chris Johnson (Project Manager) | 0.8h | 60 |
| 22 | 1.1.1.1.1.17 | Progress Review Team Meeting 17 | 0.1d | 2018-09-28 08:00 | 2018-09-28 08:48 | 115.9d | start no earlier than 2018-09-28 08:00 | Chris Johnson (Project Manager) | 0.8h | 60 |
| 23 | 1.1.1.1.1.18 | Progress Review Team Meeting 18 | 0.1d | 2018-10-05 08:00 | 2018-10-05 08:48 | 110.9d | start no earlier than 2018-10-05 08:00 | Chris Johnson (Project Manager) | 0.8h | 60 |
| 24 | 1.1.1.1.1.19 | Progress Review Team Meeting 19 | 0.1d | 2018-10-12 08:00 | 2018-10-12 08:48 | 105.9d | start no earlier than 2018-10-12 08:00 | Chris Johnson (Project Manager) | 0.8h | 60 |
| 25 | 1.1.1.1.1.20 | Progress Review Team Meeting 20 | 0.1d | 2018-10-19 08:00 | 2018-10-19 08:48 | 100.9d | start no earlier than 2018-10-19 08:00 | Chris Johnson (Project Manager) | 0.8h | 60 |
| 26 | 1.1.1.1.1.21 | Progress Review Team Meeting 21 | 0.1d | 2018-10-26 08:00 | 2018-10-26 08:48 | 95.9d | start no earlier than 2018-10-26 08:00 | Chris Johnson (Project Manager) | 0.8h | 60 |
| 27 | 1.1.1.1.1.22 | Progress Review Team Meeting 22 | 0.1d | 2018-11-02 08:00 | 2018-11-02 08:48 | 90.9d | start no earlier than 2018-11-02 08:00 | Chris Johnson (Project Manager) | 0.8h | 60 |
| 28 | 1.1.1.1.1.23 | Progress Review Team Meeting 23 | 0.1d | 2018-11-09 08:00 | 2018-11-09 08:48 | 85.9d | start no earlier than 2018-11-09 08:00 | Chris Johnson (Project Manager) | 0.8h | 60 |
| 29 | 1.1.1.1.1.24 | Progress Review Team Meeting 24 | 0.1d | 2018-11-16 08:00 | 2018-11-16 08:48 | 80.9d | start no earlier than 2018-11-16 08:00 | Chris Johnson (Project Manager) | 0.8h | 60 |
| 30 | 1.1.1.1.1.25 | Progress Review Team Meeting 25 | 0.1d | 2018-11-26 08:00 | 2018-11-26 08:48 | 76.9d | start no earlier than 2018-11-23 08:00 | Chris Johnson (Project Manager) | 0.8h | 60 |
| 31 | 1.1.1.1.1.26 | Progress Review Team Meeting 26 | 0.1d | 2018-11-30 08:00 | 2018-11-30 08:48 | 72.9d | start no earlier than 2018-11-30 08:00 | Chris Johnson (Project Manager) | 0.8h | 60 |
| 32 | 1.1.1.1.1.27 | Progress Review Team Meeting 27 | 0.1d | 2018-12-07 08:00 | 2018-12-07 08:48 | 67.9d | start no earlier than 2018-12-07 08:00 | Chris Johnson (Project Manager) | 0.8h | 60 |

| ID | WBS | Task | Duration | Start | Finish | Predecessors | Total slack | Free slack | Constraint | Resources | Work | Cost |
| --- | --- | --- | --- | --- | --- | --- | --- | --- | --- | --- | --- | --- |
| 33 | 1.1.1.1.2 | **Update Sponsors** | 146.1d | 2018-07-02 08:00 | 2019-02-01 08:48 |  | 31.9d |  |  |  | 6.4h | 480 |
| 34 | 1.1.1.1.2.1 | Update Sponsors 1 | 0.1d | 2018-07-02 08:00 | 2018-07-02 08:48 |  | 177.9d |  | start no earlier than 2018-07-01 08:00 | Chris Johnson (Project Manager) | 0.8h | 60 |
| 35 | 1.1.1.1.2.2 | Update Sponsors 2 | 0.1d | 2018-08-01 08:00 | 2018-08-01 08:48 |  | 156.9d |  | start no earlier than 2018-08-01 08:00 | Chris Johnson (Project Manager) | 0.8h | 60 |
| 36 | 1.1.1.1.2.3 | Update Sponsors 3 | 0.1d | 2018-09-04 08:00 | 2018-09-04 08:48 |  | 133.9d |  | start no earlier than 2018-09-01 08:00 | Chris Johnson (Project Manager) | 0.8h | 60 |
| 37 | 1.1.1.1.2.4 | Update Sponsors 4 | 0.1d | 2018-10-01 08:00 | 2018-10-01 08:48 |  | 114.9d |  | start no earlier than 2018-10-01 08:00 | Chris Johnson (Project Manager) | 0.8h | 60 |
| 38 | 1.1.1.1.2.5 | Update Sponsors 5 | 0.1d | 2018-11-01 08:00 | 2018-11-01 08:48 |  | 91.9d |  | start no earlier than 2018-11-01 08:00 | Chris Johnson (Project Manager) | 0.8h | 60 |
| 39 | 1.1.1.1.2.6 | Update Sponsors 6 | 0.1d | 2018-12-03 08:00 | 2018-12-03 08:48 |  | 71.9d |  | start no earlier than 2018-12-01 08:00 | Chris Johnson (Project Manager) | 0.8h | 60 |
| 40 | 1.1.1.1.2.7 | Update Sponsors 7 | 0.1d | 2019-01-02 08:00 | 2019-01-02 08:48 |  | 53.9d |  | start no earlier than 2019-01-01 08:00 | Chris Johnson (Project Manager) | 0.8h | 60 |
| 41 | 1.1.1.1.2.8 | Update Sponsors 8 | 0.1d | 2019-02-01 08:00 | 2019-02-01 08:48 |  | 31.9d |  | start no earlier than 2019-02-01 08:00 | Chris Johnson (Project Manager) | 0.8h | 60 |
| 42 | 1.1.2 | Establish WBS Estimates | 0.25d? | 2018-06-01 14:59 | 2018-06-01 17:00 |  | 176d | 0d | finish no earlier than 2018-06-01 17:00 | Chris Johnson (Project Manager) | 2h | 150.38 |
| 43 | 1.1.3 | Set Acceptance Criteria for Deliverables | 2d | 2018-06-04 08:00 | 2018-06-05 17:00 | 42 | 176d |  | start no earlier than 2018-06-04 08:00 | Chris Johnson (Project Manager) | 16h | 1,200 |
| 44 | 1.1.4 | Evaluate Risks | 1d? | 2018-06-06 08:00 | 2018-06-06 17:00 | 43, 42SS | 193.5d | 0d | start no earlier than 2018-06-04 08:00 | Chris Johnson (Project Manager) | 8h | 600 |
| 45 | 1.1.5 | Prepare Risk Mitgation Plan | 1d? | 2018-06-07 08:00 | 2018-06-07 17:00 | 44 | 193.5d | 0d |  | Chris Johnson (Project Manager) | 8h | 600 |
| 46 | 1.1.6 | Kickoff Meeting | 0.5d | 2018-06-08 08:00 | 2018-06-08 12:00 | 45 | 193.5d |  | start no earlier than 2018-06-06 08:00 | Chris Johnson (Project Manager); Developer 1 (TBD); Developer 2 (TBD); Developer 3 (TBD); Developer 4; Developer 5; End User 1; End User 2; ERP Expert 1; ERP Expert 2; Kara Siposki (Test Lead); Marc Sanders (Development Lead); Rick Burke (Infrastructure Lead); Ryan Neff (Functional Lead); Sanjay Vohra (DBA); Stacy Lyle (Functional Analyst); Todd Eliason (Tester); Trainer 1 | 4h | 453.33 |
| 47 | 1.1.7 | Document project progress | 173d | 2018-06-11 08:00 | 2019-02-18 17:00 |  | 20d |  | start no earlier than 2018-06-11 08:00 | Chris Johnson (Project Manager) [10%] | 138.4h | 10,380 |
| 48 | 1.2 | **System Requirements** | 72d | 2018-05-29 08:00 | 2018-09-07 17:00 |  |  |  |  |  | 303.92h | 22,794 |
| 49 | 1.2.1 | Gather Business Requirements | 4d | 2018-05-29 08:00 | 2018-06-01 17:00 |  | 5.67d | 0d |  | Ryan Neff (Functional Lead); Stacy Lyle (Functional Analyst) | 64h | 4,800 |
| 50 | 1.2.2 | Design Business Process Flows | 2d | 2018-06-04 08:00 | 2018-06-05 17:00 | 49 | 5.67d | 0d |  | Ryan Neff (Functional Lead); Stacy Lyle (Functional Analyst) | 32h | 2,400 |
| 51 | 1.2.3 | Document Business Process Flows | 0.5d | 2018-06-13 08:00 | 2018-06-13 12:00 | 50 | 190.5d |  |  | Ryan Neff (Functional Lead); Stacy Lyle (Functional Analyst) | 8h | 600 |
| 52 | 1.2.4 | Finalize Technical Requirements | 6d | 2018-05-29 08:00 | 2018-06-05 17:00 |  | 25.04d | 5d |  | Rick Burke (Infrastructure Lead) | 48h | 3,600 |
| 53 | 1.2.5 | Create Operational Requirements | 5d | 2018-06-06 08:00 | 2018-06-12 17:00 | 49, 50 | 5.67d | 0d |  | Ryan Neff (Functional Lead); Stacy Lyle (Functional Analyst); Rick Burke (Infrastructure Lead) | 120h | 9,000 |
| 54 | 1.2.6 | Identify Technical Infrastructure Needs | 2d | 2018-06-13 08:00 | 2018-06-14 17:00 | 52, 53 | 20.04d | 0d |  | Rick Burke (Infrastructure Lead) | 16h | 1,200 |
| 55 | 1.2.7 | Document Requirements | 0.99d | 2018-07-19 08:00 | 2018-09-07 10:38 | 49, 52, 53, 56 | 130.67d |  |  | Rick Burke (Infrastructure Lead); Stacy Lyle (Functional Analyst); Ryan Neff (Functional Lead) | 7.92h | 594 |
| 56 | 1.2.8 | Acceptance Criteria Buffer | 2d | 2018-07-17 08:00 | 2018-07-18 17:00 | 54 | 130.67d | 0d |  | Stacy Lyle (Functional Analyst) [50%] | 8h | 600 |

| ID | WBS | Task | Duration | Start | Finish | Predecessors | Total slack | Free slack | Resources | Work | Cost |
| --- | --- | --- | --- | --- | --- | --- | --- | --- | --- | --- | --- |
| 57 | 1.3 | **Software Requirements** | 25d | 2018-06-15 08:00 | 2018-07-20 17:00 |  |  |  |  | 360h | 27,000 |
| 58 | 1.3.1 | **Create Functional Requirements** | 25d | 2018-06-15 08:00 | 2018-07-20 17:00 | 49, 50, 53 |  |  |  | 216h | 16,200 |
| 59 | 1.3.1.1 | Capture Customer Profile | 4d | 2018-06-25 08:00 | 2018-06-28 17:00 |  | 4.67d | 0d | Ryan Neff (Functional Lead) | 32h | 2,400 |
| 60 | 1.3.1.2 | View and Search Product Catalog | 6d | 2018-06-15 08:00 | 2018-06-22 17:00 |  | 3.67d | 0d | Ryan Neff (Functional Lead) | 48h | 3,600 |
| 61 | 1.3.1.3 | Updating and Calculating Shopping Cart | 3d | 2018-06-29 08:00 | 2018-07-03 17:00 | 60 | 1.67d | 0d | Ryan Neff (Functional Lead) | 24h | 1,800 |
| 62 | 1.3.1.4 | Taking Payments | 6d | 2018-06-15 08:00 | 2018-06-22 17:00 |  | 8.67d | 7d | Stacy Lyle (Functional Analyst) | 48h | 3,600 |
| 63 | 1.3.1.5 | Submit Order | 8d | 2018-07-05 08:00 | 2018-07-16 17:00 | 59, 60, 61, 62 | 1.67d | 0d | Ryan Neff (Functional Lead) [50%] | 32h | 2,400 |
| 64 | 1.3.1.6 | Check Order History & Order Status | 3d | 2018-07-17 08:00 | 2018-07-19 17:00 | 63 | 1.67d | 0d | Ryan Neff (Functional Lead) | 24h | 1,800 |
| 65 | 1.3.1.7 | Document Functional requirements | 0.5d | 2018-07-20 08:00 | 2018-07-20 12:00 | 59, 60, 61, 62, 63, 64 | 1.67d |  | Ryan Neff (Functional Lead); Stacy Lyle (Functional Analyst) | 8h | 600 |
| 66 | 1.3.2 | Create Data Requirements | 3d | 2018-06-29 08:00 | 2018-07-03 17:00 | 59, 60 | 12.17d | 7d | Stacy Lyle (Functional Analyst) | 24h | 1,800 |
| 67 | 1.3.3 | Create ERP Interface Requirements | 7d | 2018-07-05 08:00 | 2018-07-13 17:00 | 63SS | 5.17d | 0d | Stacy Lyle (Functional Analyst) | 56h | 4,200 |
| 68 | 1.3.4 | Create User Interface Requirements | 4d | 2018-06-25 08:00 | 2018-06-28 17:00 | 58SS | 15.17d | 10d | Stacy Lyle (Functional Analyst) | 32h | 2,400 |
| 69 | 1.3.5 | Document Data, ERP Interface and User Interface Requiremnts | 1d | 2018-07-16 08:00 | 2018-07-16 17:00 | 66, 67, 68 | 5.17d |  | Stacy Lyle (Functional Analyst) | 8h | 600 |
| 70 | 1.3.6 | Procuring Infrastructure | 4d | 2018-06-15 08:00 | 2018-07-06 17:00 |  | 11.17d |  | Ryan Neff (Functional Lead) [50%]; Sanjay Vohra (DBA) [50%] | 16h | 1,200 |
| 71 | 1.3.7 | Acceptance Criteria Buffer | 2d | 2018-07-17 08:00 | 2018-07-18 17:00 |  | 3.17d |  | Stacy Lyle (Functional Analyst) [50%] | 8h | 600 |
| 72 | 1.4 | **Detailed Design** | 30.2d | 2018-07-23 08:00 | 2018-09-04 09:36 | 57 | 1.17d | 0d |  | 792h | 75,384 |
| 73 | 1.4.1 | Design Capture Customer Profile Pages & Components | 9d | 2018-07-23 08:00 | 2018-08-02 17:00 |  | 4.17d | 0d | Marc Sanders (Development Lead); Ryan Neff (Functional Lead) [50%] | 108h | 8,100 |
| 74 | 1.4.2 | Design View and Search Product Catalog Pages & Components | 9d | 2018-07-23 08:00 | 2018-08-02 17:00 |  | 1.17d | 0d | Developer 1 (TBD); Ryan Neff (Functional Lead) [50%] | 108h | 14,580 |
| 75 | 1.4.3 | Design Updating and Calculating Shopping Cart | 3d | 2018-08-03 08:00 | 2018-08-07 17:00 | 74 | 1.17d | 0d | Developer 1 (TBD); Ryan Neff (Functional Lead) | 48h | 5,760 |
| 76 | 1.4.4 | Design Taking Payments Pages & Components | 6d | 2018-07-23 08:00 | 2018-08-07 17:00 |  | 1.17d | 0d | Marc Sanders (Development Lead); Stacy Lyle (Functional Analyst) | 48h | 3,600 |
| 77 | 1.4.5 | Design Submit Order Pages & Components | 8d | 2018-08-08 08:00 | 2018-08-17 17:00 | 73, 74, 75, 76 | 9.17d | 0d | Marc Sanders (Development Lead); Ryan Neff (Functional Lead) | 128h | 9,600 |
| 78 | 1.4.6 | Design check Order History & Order Status Pages & Components | 2d | 2018-08-20 08:00 | 2018-08-21 17:00 | 77 | 9.17d | 0d | Marc Sanders (Development Lead); Ryan Neff (Functional Lead) | 32h | 2,400 |
| 79 | 1.4.7 | Design Logical & Physical Data Model | 12d | 2018-07-23 08:00 | 2018-08-07 17:00 |  | 9.04d | 3d | Sanjay Vohra (DBA); Stacy Lyle (Functional Analyst) | 144h | 10,800 |
| 80 | 1.4.8 | Design ERP Interface | 18d | 2018-08-08 08:00 | 2018-08-31 17:00 | 73, 74, 75, 76 | 1.17d | 0d | Developer 1 (TBD) [66.7%]; Stacy Lyle (Functional Analyst) [66.7%] | 160h | 19,200 |
| 81 | 1.4.9 | Document the design of all modules | 0.2d | 2018-09-04 08:00 | 2018-09-04 09:36 | 73, 74, 75, 76, 77, 78, 79, 80 | 1.17d |  | Ryan Neff (Functional Lead); Stacy Lyle (Functional Analyst); Developer 1 (TBD); Marc Sanders (Development Lead); Sanjay Vohra (DBA) | 8h | 744 |
| 82 | 1.4.10 | Acceptance Criteria Buffer | 2d | 2018-08-22 08:00 | 2018-08-23 17:00 |  | 7.37d |  | Ryan Neff (Functional Lead) [50%] | 8h | 600 |

| ID | WBS | Task | Duration | Start | Finish | Predecessors | Total slack | Free slack | Constraint | Resources | Work | Cost |
| --- | --- | --- | --- | --- | --- | --- | --- | --- | --- | --- | --- | --- |
| 83 | 1.5 | **Test Planning** | 55.87d | 2018-07-23 08:00 | 2018-10-09 15:56 |  | 1.17d |  |  |  | 452h | 33,900 |
| 84 | 1.5.1 | Gather Testing Requirements | 7d | 2018-07-23 08:00 | 2018-07-31 17:00 | 58 | 24.37d | 23.2d |  | Kara Siposki (Test Lead); Todd Eliason (Tester) | 112h | 8,400 |
| 85 | 1.5.2 | Create System Test Plan & Test Cases | 10d | 2018-09-04 09:36 | 2018-09-18 09:36 | 84, 72 | 1.17d | 0d |  | Kara Siposki (Test Lead); Todd Eliason (Tester) | 160h | 12,000 |
| 86 | 1.5.3 | Write System Test Scripts | 14.67d | 2018-09-19 09:36 | 2018-10-09 15:56 | 87 | 1.17d | 0d |  | Kara Siposki (Test Lead); Todd Eliason (Tester) | 176h | 13,200 |
| 87 | 1.5.4 | Acceptance Criteria Buffer | 1d | 2018-09-18 09:36 | 2018-09-19 09:36 | 85 | 1.17d | 0d |  | Kara Siposki (Test Lead) [50%] | 4h | 300 |
| 88 | 1.6 | **Technical Infrastructure** | 117d | 2018-06-15 08:00 | 2018-11-30 17:00 |  |  |  |  |  | 1036.8h | 93,360 |
| 89 | 1.6.1 | Create Development Environment | 20d | 2018-06-15 08:00 | 2018-07-13 17:00 | 54 | 20.04d | 0d |  | Rick Burke (Infrastructure Lead) | 160h | 12,000 |
| 90 | 1.6.2 | Create Testing Environment | 38d | 2018-07-16 08:00 | 2018-09-06 17:00 | 89 | 84.3d | 0d |  | Rick Burke (Infrastructure Lead) [90%] | 273.6h | 20,520 |
| 91 | 1.6.3 | Support Development Environment | 38d | 2018-07-16 08:00 | 2018-09-06 17:00 | 89 | 130.5d | 46.33d |  | Rick Burke (Infrastructure Lead) [10%] | 30.4h | 2,280 |
| 92 | 1.6.4 | Support Testing Environment & Deployment | 46d | 2018-09-07 10:38 | 2018-11-12 10:38 | 90 | 84.17d | 0d |  | Rick Burke (Infrastructure Lead) | 368h | 27,600 |
| 93 | 1.6.5 | Support Database | 46d | 2018-09-26 08:00 | 2018-11-30 17:00 | 109 | 72d |  |  | Sanjay Vohra (DBA) [10%] | 36.8h | 2,760 |
| 94 | 1.6.6 | Security and Maintenance: Add web application and real-time backups | 14d | 2018-09-07 08:00 | 2018-09-26 17:00 | 90 | 90.5d | 0d |  | ERP Expert 1 [50%] | 56h | 9,800 |
| 95 | 1.6.7 | Security and Maintenance: Data Loss Prevention Infrastructure | 6d | 2018-09-27 08:00 | 2018-10-04 17:00 | 94 | 90.5d | 0d |  | ERP Expert 2 [50%] | 24h | 4,200 |
| 96 | 1.6.8 | Security and Maintenance: Setup Authentication | 6d | 2018-10-05 08:00 | 2018-10-12 17:00 | 95 | 90.5d | 0d |  | ERP Expert 1 [50%] | 24h | 4,200 |
| 97 | 1.6.9 | Security and Maintenance: Threat Intelligence | 6d | 2018-10-15 08:00 | 2018-10-22 17:00 | 96 | 90.5d | 0d |  | ERP Expert 1 [50%] | 24h | 4,200 |
| 98 | 1.6.10 | Security and Maintenance: Identity and Access Management | 7d | 2018-10-23 08:00 | 2018-10-31 17:00 | 97 | 90.5d | 0d |  | ERP Expert 2 [50%] | 24h | 4,200 |
| 99 | 1.6.11 | Document Technical infrastructure details | 0.5d | 2018-11-12 10:38 | 2018-11-12 15:38 | 89, 90, 91, 92, 100 | 84.17d |  | start no earlier than 2018-10-23 08:00 | Rick Burke (Infrastructure Lead); Sanjay Vohra (DBA) | 8h | 600 |
| 100 | 1.6.12 | Acceptance Criteria Buffer | 1d? | 2018-11-01 08:00 | 2018-11-01 17:00 | 98 | 90.5d | 6.33d | start no earlier than 2018-10-22 08:00 | ERP Expert 2 [50%]; Sanjay Vohra (DBA) [50%] | 8h | 1,000 |
| 101 | 1.7 | **Development & Unit Test** | 82.68d | 2018-08-03 08:00 | 2018-11-30 14:24 | 89 | 6.04d |  |  |  | 1545.94h | 211,508.81 |
| 102 | 1.7.1 | Train developers | 6d | 2018-08-03 08:00 | 2018-08-10 17:00 | 73 | 6.04d | 0d |  | Trainer 1; Developer 1 (TBD); Developer 2 (TBD); Developer 3 (TBD) | 96h | 14,160 |
| 103 | 1.7.2 | Build Capture Customer Profile Pages & Components | 13d | 2018-08-13 08:00 | 2018-08-29 17:00 | 73, 102 | 12.04d | 6d |  | Developer 2 (TBD) | 104h | 18,200 |
| 104 | 1.7.3 | Build View and Search Product Catalog Pages & Components | 12d | 2018-08-13 08:00 | 2018-08-28 17:00 | 74, 102 | 6.04d | 0d |  | Developer 3 (TBD) | 96h | 16,800 |
| 105 | 1.7.4 | Build Updating and Calculating Shopping Cart | 7d | 2018-08-29 08:00 | 2018-09-07 17:00 | 75, 104, 102 | 6.04d | 0d |  | Developer 3 (TBD) | 56h | 9,800 |
| 106 | 1.7.5 | Build Taking Payments Pages & Components | 6d | 2018-08-30 08:00 | 2018-09-07 17:00 | 76, 102 | 6.04d | 0d |  | Developer 2 (TBD) | 48h | 8,400 |
| 107 | 1.7.6 | Build Submit Order Pages & Components | 12d | 2018-09-10 08:00 | 2018-09-25 17:00 | 77, 103, 104, 105, 106, 102 | 6.04d | 2.2d |  | Developer 2 (TBD); Developer 3 (TBD) | 192h | 33,600 |
| 108 | 1.7.7 | Build Check Order History & Order Status Pages & Components | 6d | 2018-08-22 08:00 | 2018-08-29 17:00 | 78, 102 | 24.04d | 20.2d |  | Marc Sanders (Development Lead) | 48h | 3,600 |
| 109 | 1.7.8 | Build Logical & Physical Data Model | 31d | 2018-08-13 08:00 | 2018-09-25 17:00 | 79, 102 | 6.04d | 0d |  | Sanjay Vohra (DBA) [50%] | 124h | 9,300 |
| 110 | 1.7.9 | Build ERP Interface | 18d | 2018-09-04 09:36 | 2018-09-28 09:36 | 80, 102 | 3.84d | 0d |  | Developer 1 (TBD) | 144h | 23,760 |
| 111 | 1.7.10 | Support Development & Assembly Test | 23d | 2018-09-04 09:36 | 2018-10-05 09:36 | 72, 102 | 72.32d | 0d |  | Ryan Neff (Functional Lead); Stacy Lyle (Functional Analyst) | 368h | 27,600 |
| 112 | 1.7.11 | Security and Manintenance Unit Testing | 38.48d | 2018-10-05 09:36 | 2018-11-30 14:24 | 111 | 72.32d |  |  | ERP Expert 1 [25%]; Developer 4; Developer 5 | 253.7h | 44,398.01 |
| 113 | 1.7.12 | Document development work and best practices | 0.58d | 2018-09-28 09:36 | 2018-10-05 11:55 | 103, 104, 105, 106, 107, 108, 109, 110 | 110.51d |  |  | Developer 1 (TBD); Developer 2 (TBD); Developer 3 (TBD); Stacy Lyle (Functional Analyst); Sanjay Vohra (DBA); Marc Sanders (Development Lead); Ryan Neff (Functional Lead) | 16.24h | 1,890.8 |

| ID | WBS | Task | Duration | Start | Finish | Predecessors | Total slack | Free slack | Constraint | Resources | Work | Cost |
| --- | --- | --- | --- | --- | --- | --- | --- | --- | --- | --- | --- | --- |
| 114 | 1.8 | **Testing** | 56.83d | 2018-09-10 08:00 | 2018-11-29 15:36 |  | 1.17d | 0d |  |  | 1969.16h | 233,757.44 |
| 115 | 1.8.1 | **Perform Assembly Testing** | 19.2d | 2018-09-10 08:00 | 2018-10-05 09:36 | 84 | 3.84d | 2.67d |  |  | 256h | 30,800 |
| 116 | 1.8.1.1 | Perform Phase 1 Testing | 12d | 2018-09-10 08:00 | 2018-09-25 17:00 | 103, 104, 105 | 6.04d | 2.2d |  | Marc Sanders (Development Lead) | 96h | 7,200 |
| 117 | 1.8.1.2 | Perform Phase 2 Testing | 5d | 2018-09-28 09:36 | 2018-10-05 09:36 | 106, 107, 108, 116, 109, 110 | 3.84d |  |  | Marc Sanders (Development Lead); Developer 1 (TBD); Developer 2 (TBD); Developer 3 (TBD) | 160h | 23,600 |
| 118 | 1.8.2 | Perform System Testing | 18.63d | 2018-10-09 15:56 | 2018-11-05 11:58 | 115, 85, 86 | 1.17d | 0d |  | Kara Siposki (Test Lead); Marc Sanders (Development Lead); Ryan Neff (Functional Lead) [25%]; Stacy Lyle (Functional Analyst) [25%]; Todd Eliason (Tester); ERP Expert 1 [50%]; ERP Expert 2 [50%]; Developer 1 (TBD); Developer 2 (TBD) | 929.32h | 112,043.84 |
| 119 | 1.8.3 | Perform Validation Testing | 8d | 2018-11-05 11:58 | 2018-11-15 11:58 | 118 | 1.17d | 0d |  | Kara Siposki (Test Lead); Todd Eliason (Tester); Marc Sanders (Development Lead); Developer 1 (TBD); Developer 2 (TBD); Developer 3 (TBD); Ryan Neff (Functional Lead); Stacy Lyle (Functional Analyst); End User 1; End User 2 | 640h | 66,560 |
| 120 | 1.8.4 | Security and Maintenance Testing | 8d | 2018-11-15 11:58 | 2018-11-29 11:58 | 119 | 1.17d | 0d |  | ERP Expert 1; ERP Expert 2 | 128h | 22,400 |
| 121 | 1.8.5 | Document tests and test results | 0.33d | 2018-11-29 11:58 | 2018-11-29 15:36 | 115, 118, 120 | 1.17d |  |  | Developer 1 (TBD); Developer 2 (TBD); Developer 3 (TBD); Kara Siposki (Test Lead); Stacy Lyle (Functional Analyst); Todd Eliason (Tester) | 15.84h | 1,953.6 |
| 122 | 1.9 | **Deployment** | 23.05d | 2018-11-29 15:36 | 2019-01-07 16:02 | 114 | 1.17d |  |  |  | 1424h | 151,141.05 |
| 123 | 1.9.1 | Implement System | 10d | 2018-11-29 15:36 | 2018-12-13 15:36 |  | 1.17d | 0d |  | Kara Siposki (Test Lead); Todd Eliason (Tester); Marc Sanders (Development Lead); Developer 1 (TBD); Developer 2 (TBD); Developer 3 (TBD); Ryan Neff (Functional Lead); Stacy Lyle (Functional Analyst) | 640h | 71,200 |
| 124 | 1.9.2 | Deploy To Production | 1d | 2018-12-13 15:36 | 2018-12-14 15:36 | 123 | 1.17d | 0d |  | Kara Siposki (Test Lead); Todd Eliason (Tester); Marc Sanders (Development Lead); Developer 1 (TBD); Developer 2 (TBD); Developer 3 (TBD); Ryan Neff (Functional Lead); Stacy Lyle (Functional Analyst) | 64h | 7,120 |
| 125 | 1.9.3 | Acceptance Criteria Buffer | 1d | 2018-12-14 15:36 | 2018-12-17 15:36 | 124 | 50.12d | 0d |  |  |  |  |
| 126 | 1.9.4 | Project Wrap up | 11.05d | 2018-12-17 15:36 | 2019-01-07 16:02 | 125 | 50.12d |  |  | Developer 1 (TBD); Developer 2 (TBD); Developer 3 (TBD); Kara Siposki (Test Lead); Marc Sanders (Development Lead); Ryan Neff (Functional Lead); Stacy Lyle (Functional Analyst); Todd Eliason (Tester); Rick Burke (Infrastructure Lead) | 720h | 72,821.05 |
| 127 | 1.10 | **Post-Installation Maintenance and Support** | 61d | 2018-12-18 08:00 | 2019-03-18 17:00 | 124 |  |  |  |  | 976h | 135,983.63 |
| 128 | 1.10.1 | Maintenance Post-Installation | 61d | 2018-12-18 08:00 | 2019-03-18 17:00 |  | 0d |  | finish no earlier than 2019-03-18 17:00 | Sanjay Vohra (DBA) [50%]; ERP Expert 1 [50%] | 488h | 50,583.63 |
| 129 | 1.10.2 | Support Post-Installation | 61d | 2018-12-18 08:00 | 2019-03-18 17:00 | 128FF | 0d |  | start no earlier than 2018-12-18 08:00 | ERP Expert 2 [50%]; Developer 5 [50%] | 488h | 85,400 |
